# Предварительный план2007

Schedule from MS Project, 2013-04-22 to 2014-05-06, A marks actual dates.

## Calendars

- Стандартный: Mon-Fri 09:00-13:00, 14:00-18:00; Sat-Sun off. Exceptions (off unless hours are given): 2013-05-01 to 2013-05-05 (Первое мая), 2013-05-09 to 2013-05-12 (Девятое мая).

## Resources

| Resource |
| --- |
| Шилин Роман |
| Аналитик |
| Андрей Пирожков |
| Тугушев Илья |
| Денис Митавский |
| Алексей Львов |
| Андрей Карандей |
| Валерий Мацукевич |
| Java разработчик3 |
| Java разработчик4 |
| WEB-дизайнер |
| Влад Симоненко |
| Андрей Цветков |
| Java разработчик5 |
| Тест Аналитик |
| Java разработчик6 |
| Тестировщик |
| Технический писатель |
| Технолог - администратор |
| Технический писатель2 |
| Системный аналитик1 |
| Системный аналитик2 |
| Системный аналитик3 |
| Системный аналитик4 |
| Владимир Панов |
| Сергей Кашанский |
| Роман Митинков |
| Роман Болотов |
| Глеб Наздрачев |
| Евгения Капустина |
| Эдуард Михайлов |
| Тимофей Билый |

## Schedule

| ID | WBS | Task | Type | Duration | Start | Finish | Predecessors | Complete | Remaining | Total slack | Free slack | Constraint | Resources | Work | Actual work |
| --- | --- | --- | --- | --- | --- | --- | --- | --- | --- | --- | --- | --- | --- | --- | --- |
| 1 | 1 | **Разработка второй версии CM4/5** |  | 267d? | 2013-04-22 A | 2014-05-06 |  | 13% | 232.53d? | 0d |  |  |  | 23805.6h | 2347.14h |
| 2 | 1.1 | Принято решение о начале разработки | milestone | 0d | 2013-04-22 | 2013-04-22 |  |  |  | 0d |  | start no earlier than 2013-04-22 |  |  |  |
| 3 | 1.2 | Управление проектом |  | 267d | 2013-04-22 | 2014-05-06 | 2 |  |  | 0d |  |  | Шилин Роман | 2136h |  |
| 4 | 1.3 | **Управление требованиями** |  | 193d | 2013-05-27 A | 2014-02-19 | 2 | 6% | 181.71d | 54d |  |  | Аналитик | 3463.2h | 178.34h |
| 5 | 1.3.1 | Выделен аналитик на проект | milestone | 0d | 2013-05-27 A | 2013-05-27 A |  | 100% |  |  |  | start no earlier than 2013-05-27 |  |  |  |
| 6 | 1.3.2 | Формирование скоупа проекта _ верхний уровень |  | 15d | 2013-05-27 A | 2013-06-14 | 5 | 73% | 4d | 54d | 0d |  | Евгения Капустина | 120h | 88h |
| 7 | 1.3.3 | Скоуп на систему сформирован и утвержден | milestone | 0d | 2013-06-21 | 2013-06-21 | 6FS+5d |  |  | 54d | 0d |  |  |  |  |
| 8 | 1.3.4 | Сопровождение требований |  | 173d | 2013-06-24 | 2014-02-19 | 5, 7 |  |  | 54d |  |  | Эдуард Михайлов; Евгения Капустина [30%] | 1799.2h |  |
| 9 | 1.4 | **Создание модуля "Делопроизводство" (документоориентированная среда)** |  | 240d? | 2013-04-22 A | 2014-03-28 |  | 16% | 201.13d? | 27d |  |  |  | 17758.4h | 2168.8h |
| 10 | 1.4.1 | Первичные требования для создания модуля "Делопроизводство" подготовлены | milestone | 0d | 2013-04-22 | 2013-04-22 | 2 |  |  | 0d |  | finish no earlier than 2012-04-02 |  |  |  |
| 11 | 1.4.2 | **Апробация идей прототипа** |  | 24d | 2013-04-29 A | 2013-06-06 |  | 99% | 0d | 238d |  |  |  | 144h | 144h |
| 12 | 1.4.2.1 | Пирожков доступен | milestone | 0d | 2013-06-03 | 2013-06-03 |  |  |  | 242d |  | start no earlier than 2013-06-03 |  |  |  |
| 13 | 1.4.2.2 | Проведение предварительных испытаний системы |  | 9d | 2013-04-29 A | 2013-05-16 A | 10FS+5d | 100% |  |  |  |  | Андрей Цветков | 72h | 72h |
| 14 | 1.4.2.3 | Описание обработки ВХ. Док. На примере технологий прототипа |  | 9d | 2013-05-20 A | 2013-06-06 A |  | 100% |  |  |  | start no earlier than 2013-05-20 | Андрей Пирожков | 72h | 72h |
| 15 | 1.4.3 | **Настройка инфраструктуры** |  | 37d | 2013-05-20 A | 2013-07-09 | 24 | 47% | 19.73d | -21d | 0d |  |  | 120h | 56h |
| 16 | 1.4.3.1 | Настройка непрерывной интеграции |  | 4d | 2013-05-20 A | 2013-05-23 A |  | 100% |  |  |  |  | Тугушев Илья | 32h | 32h |
| 17 | 1.4.3.2 | Поддержка UNIT-тестирования и интеграционного тестирования на уроне среды непрерывной интеграции |  | 5d | 2013-06-04 | 2013-06-10 |  |  |  | 0d |  | start no earlier than 2013-06-04 | Тугушев Илья | 40h |  |
| 18 | 1.4.3.3 | Репакеджинг проекта |  | 3d | 2013-05-27 A | 2013-05-29 A |  | 100% |  |  |  | start no earlier than 2013-05-27 | Сергей Кашанский | 24h | 24h |
| 19 | 1.4.3.4 | Автоматическое заполнение параметров JDBC через Maven |  | 3d | 2013-07-05 | 2013-07-09 | 30 |  |  | -21d | 0d |  | Андрей Цветков | 24h |  |
| 20 | 1.4.4 | **Проектирование и формирование ядра системы** |  | 152d? | 2013-04-22 A | 2013-11-26 | 10 | 26% | 112.42d? | 47d | 0d |  |  | 7474.4h | 1469.6h |
| 21 | 1.4.4.1 | **Определение структуры модуля Делопроизводство** |  | 25d | 2013-04-22 A | 2013-05-31 A |  | 100% |  |  |  |  |  | 352h | 352h |
| 22 | 1.4.4.1.1 | Разбивка на слои |  | 5d | 2013-04-22 A | 2013-04-26 A |  | 100% |  |  |  |  | Денис Митавский [50%]; Андрей Пирожков [50%] | 40h | 40h |
| 23 | 1.4.4.1.2 | Конфигурации, загрузка и инициализация системы в базовой конфигурации |  | 5d | 2013-04-29 A | 2013-05-08 A | 22 | 100% |  |  |  |  | Валерий Мацукевич; Денис Митавский [50%] | 60h | 60h |
| 24 | 1.4.4.1.3 | Базовая конфигурация объектов системы |  | 5d | 2013-05-13 A | 2013-05-17 A | 22, 23 | 100% |  |  |  |  | Денис Митавский [50%]; Валерий Мацукевич | 60h | 60h |
| 25 | 1.4.4.1.4 | Юнит-тестирование - базис |  | 6d | 2013-05-17 A | 2013-05-24 A | 13 | 100% |  |  |  |  | Денис Митавский [50%]; Андрей Цветков | 72h | 72h |
| 26 | 1.4.4.1.5 | Базовая имплементация слоя DAO |  | 5d | 2013-05-20 A | 2013-05-24 A | 24 | 100% |  |  |  |  | Валерий Мацукевич | 40h | 40h |
| 27 | 1.4.4.1.6 | Обеспечение программных компонет верификации первой очереди |  | 5d | 2013-05-27 A | 2013-05-31 A | 26 | 100% |  |  |  |  | Валерий Мацукевич; Андрей Цветков | 80h | 80h |

Notes:
- 27: UNIT тестирование в рамках наработанного кода

| ID | WBS | Task | Type | Duration | Start | Finish | Predecessors | Complete | Remaining | Total slack | Free slack | Constraint | Resources | Work | Actual work |
| --- | --- | --- | --- | --- | --- | --- | --- | --- | --- | --- | --- | --- | --- | --- | --- |
| 28 | 1.4.4.2 | **DAO** |  | 43d? | 2013-06-03 A | 2013-07-31 | 26, 27 | 84% | 6.94d? | 77d |  |  |  | 224h | 184h |
| 29 | 1.4.4.2.1 | DAO для бизнес-объектов |  | 7d | 2013-06-03 A | 2013-06-11 A |  | 100% |  |  |  |  | Валерий Мацукевич | 56h | 56h |
| 30 | 1.4.4.2.2 | DAO для коллекций |  | 13d | 2013-06-12 A | 2013-07-04 A | 29 | 100% |  |  |  |  | Андрей Цветков | 104h | 104h |
| 31 | 1.4.4.2.3 | Функционал системы готов для проведения проектирования интеграции с GUI СМ4 | milestone | 0d | 2013-06-24 A | 2013-06-24 A | 29, 30 | 100% |  |  |  |  |  |  |  |
| 32 | 1.4.4.2.4 | DAO - утилитарные поля |  | 6d | 2013-06-25 A | 2013-07-08 A | 30 | 100% |  |  |  |  | Денис Митавский [50%] | 24h | 24h |
| 33 | 1.4.4.2.5 | DAO - кэш уровня транзакции |  | 5d? | 2013-07-25 | 2013-07-31 | 119 |  |  | 77d | 0d |  | Валерий Мацукевич | 40h |  |
| 34 | 1.4.4.3 | CRUD-сервис для бизнес-объектов |  | 10d | 2013-06-11 A | 2013-06-24 A | 30FF | 100% |  |  |  |  | Андрей Цветков | 80h | 80h |
| 35 | 1.4.4.4 | Поддержка отсортированных дочерних бизнес-объектов |  | 5d | 2013-08-01 | 2013-08-07 | 33 |  |  | 77d | 0d |  | Валерий Мацукевич | 40h |  |
| 36 | 1.4.4.5 | Настройка Datasources/Jaas сервера приложений средствами Maven |  | 2d | 2013-07-05 A | 2013-07-08 A | 30 | 100% |  |  |  |  | Сергей Кашанский | 16h | 16h |
| 37 | 1.4.4.6 | Рефакторинг |  | 4d | 2013-07-03 A | 2013-07-08 A | 26 | 100% |  |  |  | start no earlier than 2013-07-03 | Валерий Мацукевич | 32h | 32h |
| 38 | 1.4.4.7 | **Права доступа** |  | 43d | 2013-06-12 A | 2013-08-09 |  | 86% | 6d | 124d |  |  |  | 248h | 204h |
| 39 | 1.4.4.7.1 | Права - оптимизация хранения (проектирование) |  | 24d | 2013-06-12 A | 2013-07-15 | 29 | 96% | 1d | 143d |  |  | Андрей Пирожков [50%] | 96h | 92h |
| 40 | 1.4.4.7.2 | Описание существующими декларативными средствами конфигурации |  | 9d | 2013-07-16 A | 2013-07-26 A | 39, 19 | 100% |  |  |  |  | Андрей Цветков | 72h | 72h |
| 41 | 1.4.4.7.3 | Автофильтрация |  | 10d | 2013-07-29 A | 2013-08-09 | 40 | 50% | 5d | 106d | 0d |  | Андрей Цветков | 80h | 40h |
| 42 | 1.4.4.8 | **Workflow - интеграция с Activiti** |  | 59d | 2013-06-07 A | 2013-08-28 | 14 | 30% | 41.12d | 31d | 0d |  |  | 280h | 40h |
| 43 | 1.4.4.8.1 | Проектирование |  | 10d | 2013-06-07 A | 2013-07-24 A | 39 | 100% |  |  |  |  | Андрей Пирожков [50%] | 40h | 40h |
| 44 | 1.4.4.8.2 | Разработка |  | 23d | 2013-07-25 | 2013-08-28 | 43 |  |  | 31d |  |  | Андрей Пирожков [50%]; Сергей Кашанский | 240h |  |
| 45 | 1.4.4.9 | Наследование ??? |  | 9d | 2013-07-25 | 2013-08-06 | 43 |  |  | 93d | 0d |  | Андрей Пирожков [50%] | 36h |  |
| 46 | 1.4.4.10 | **Коллекции** |  | 66d | 2013-05-29 A | 2013-08-28 |  | 56% | 28.88d | 88d |  |  |  | 320h | 188h |
| 47 | 1.4.4.10.1 | Коллекции - конфигурация |  | 3d | 2013-05-29 A | 2013-05-31 A |  | 100% |  |  |  |  | Денис Митавский | 24h | 24h |
| 48 | 1.4.4.10.2 | DAO - язык запросов коллекций |  | 12d | 2013-05-29 A | 2013-06-17 A | 47 | 100% |  |  |  |  | Сергей Кашанский; Денис Митавский [50%] | 140h | 140h |
| 49 | 1.4.4.10.3 | Сервис получения и получения счетчиков |  | 3d | 2013-05-29 A | 2013-05-31 A | 47 | 100% |  |  |  |  | Сергей Кашанский | 24h | 24h |
| 50 | 1.4.4.10.4 | ПКД |  | 14d | 2013-08-07 | 2013-08-28 | 48, 45 |  |  | 88d | 0d |  | Андрей Пирожков [50%]; Сергей Кашанский | 132h |  |
| 51 | 1.4.4.11 | **Действия** |  | 23d | 2013-08-12 | 2013-09-11 |  |  |  | 101d |  |  |  | 184h |  |
| 52 | 1.4.4.11.1 | Концепция |  | 4d | 2013-08-12 | 2013-08-15 | 47, 41 |  |  | 106d | 0d |  | Андрей Пирожков [50%] | 16h |  |
| 53 | 1.4.4.11.2 | Реализация |  | 19d | 2013-08-16 | 2013-09-11 | 52 |  |  | 101d |  |  | Андрей Карандей; Андрей Пирожков [50%] | 168h |  |

Notes:
- 34: - проектирование базового API / - имплементация
- 35: Для отображени и поддержания заданного порядка следования объектов
- 39: Права доступа - оптимизация подхода, / подбор других названий сущностей (таблицы) переименовать таблицы и улучшить производительность
- 40: Права доступа - описание существующими декларативными средствами конфигурации / (для автоматического создания таблиц) + / конфигурирование под-запроса для фильтрации - там же
- 41: Права доступа - авто-фильтрация / + "внедрение в под-запросы"
- 42: Задачи: / - модель процесса (BPMN) / - Имплементация WF - сервиса , взаимодействие системы с Аctiviti
- 45: Архитектура - форма хранения данных (с учетом производительности) / Наследование типов объектов - уровень DAO
- 48: DAO - язык запросов коллекций
- 49: Коллекции - сервис получения и получения счетчиков
- 50: Для поддержания реализации избранного, отметок о прочтении и т.д.

| ID | WBS | Task | Type | Duration | Start | Finish | Predecessors | Complete | Remaining | Total slack | Free slack | Constraint | Resources | Work | Actual work |
| --- | --- | --- | --- | --- | --- | --- | --- | --- | --- | --- | --- | --- | --- | --- | --- |
| 54 | 1.4.4.12 | **Бизнес-объекты (иерархии доменных объектов)** |  | 24d | 2013-07-24 A | 2013-08-27 |  | 53% | 11.2d | 113d |  |  |  | 88h | 32h |
| 55 | 1.4.4.12.1 | Проектирование |  | 5d | 2013-07-24 A | 2013-07-30 A | 56SF | 100% |  |  |  |  | Андрей Пирожков [20%] | 8h | 8h |
| 56 | 1.4.4.12.2 | Реализация |  | 10d | 2013-07-31 A | 2013-08-27 | 95SF | 30% | 7d | 113d |  |  | Андрей Пирожков | 80h | 24h |
| 57 | 1.4.4.13 | **Слой сопряжения GUI CM4** |  | 106d | 2013-06-25 | 2013-11-19 |  |  |  | 52d |  |  |  | 1394.4h |  |
| 58 | 1.4.4.13.1 | REST-протокол для АРМа - проектирование |  | 3d | 2013-06-25 | 2013-06-27 | 31 |  |  | 78d | 26d |  | Тугушев Илья; Денис Митавский [20%]; Андрей Пирожков [20%] | 33.6h |  |
| 59 | 1.4.4.13.2 | Проектиирование выполнено и ресурсы достуны | milestone | 0d | 2013-07-31 | 2013-07-31 |  |  |  | 52d | 0d | start no earlier than 2013-07-31 |  |  |  |
| 60 | 1.4.4.13.3 | Реализация коннекторов к платформе |  | 70d | 2013-08-05 | 2013-11-08 | 58, 59FS+3d |  |  | 52d | 0d |  | Тугушев Илья [33%]; Роман Болотов; Глеб Наздрачев | 1304.8h |  |
| 61 | 1.4.4.13.4 | Сопряжение - работа с вложениями |  | 7d | 2013-11-11 | 2013-11-19 | 60, 67 |  |  | 52d |  |  | Влад Симоненко | 56h |  |
| 62 | 1.4.4.14 | **Сервис работы с вложениями** |  | 20d | 2013-07-11 A | 2013-08-07 |  | 99% | 0.3d | 119d |  |  |  | 160h | 157.6h |
| 63 | 1.4.4.14.1 | Принято решение о проектировании сервиса обработки вложений | milestone | 0d | 2013-07-11 A | 2013-07-11 A |  | 100% |  |  |  | start no earlier than 2013-07-11 |  |  |  |
| 64 | 1.4.4.14.2 | API |  | 5d | 2013-07-11 A | 2013-07-17 A | 63 | 100% |  |  |  |  | Андрей Цветков | 40h | 40h |
| 65 | 1.4.4.14.3 | Реализация |  | 7d | 2013-07-18 A | 2013-07-26 A | 64 | 100% |  |  |  |  | Влад Симоненко | 56h | 56h |
| 66 | 1.4.4.14.4 | Исследования по перехватчику конца транзакции |  | 5d | 2013-07-29 A | 2013-08-02 A | 65 | 100% |  |  |  |  | Влад Симоненко | 40h | 40h |
| 67 | 1.4.4.14.5 | Чистка файлов в случае отката транзакции |  | 3d | 2013-08-05 A | 2013-08-07 | 66 | 90% | 0.3d | 119d | 67d |  | Влад Симоненко | 24h | 21.6h |
| 68 | 1.4.4.15 | **Поиск** |  | 36d | 2013-07-29 A | 2013-09-17 | 34 | 10% | 32.57d | 97d |  |  |  | 436h | 48h |
| 69 | 1.4.4.15.1 | Идея поиска оформлена | milestone | 0d | 2013-07-29 | 2013-07-29 |  |  |  | 4d | 0d | finish no earlier than 2013-07-29 |  |  |  |
| 70 | 1.4.4.15.2 | Поиск |  | 16d | 2013-07-30 A | 2013-08-26 | 69 | 25% | 12d | 97d | 0d |  | Андрей Пирожков [50%]; Андрей Цветков | 180h | 48h |
| 71 | 1.4.4.15.3 | Полнотекстовый поиск |  | 20d | 2013-08-13 | 2013-09-09 | 69, 70FS-10d |  |  | 97d | 0d |  | Влад Симоненко | 160h |  |
| 72 | 1.4.4.15.4 | Расширенный поиск |  | 6d | 2013-09-10 | 2013-09-17 | 70, 71 |  |  | 97d |  |  | Андрей Пирожков; Андрей Цветков | 96h |  |
| 73 | 1.4.4.16 | **Работа с отчетами** |  | 23d | 2013-08-29 | 2013-09-30 |  |  |  | 88d |  |  |  | 276h |  |
| 74 | 1.4.4.16.1 | JDBC-драйвер для системы построения отчётов |  | 8d | 2013-08-29 | 2013-09-09 | 50 |  |  | 88d | 0d |  | Денис Митавский [50%]; Андрей Цветков | 96h |  |
| 75 | 1.4.4.16.2 | Интеграция с Jasper Reports |  | 15d | 2013-09-10 | 2013-09-30 | 74 |  |  | 88d |  |  | Денис Митавский [50%]; Андрей Цветков | 180h |  |
| 76 | 1.4.4.17 | **GUI** |  | 87d? | 2013-07-22 A | 2013-11-19 |  | 5% | 82.68d? | 50d | 0d |  |  | 1780h | 64h |
| 77 | 1.4.4.17.1 | Принято решение о применении GWT-компонентов | milestone | 0d | 2013-07-22 | 2013-07-22 |  |  |  | 99d | 0d | start no earlier than 2013-07-22 |  |  |  |
| 78 | 1.4.4.17.2 | Адаптация компонентов GUI из СМ4 для наложения на архитектуру см5 |  | 20d | 2013-07-22 | 2013-08-16 | 77 |  |  | 99d | 0d | start no earlier than 2013-07-11 | Тимофей Билый; Алексей Львов | 320h |  |
| 79 | 1.4.4.17.3 | Изучение GWT/Настройка CMJ 4 для дебага |  | 4d | 2013-08-05 | 2013-08-08 |  |  |  | 123d |  | start no earlier than 2013-08-05 | Андрей Карандей | 32h |  |
| 80 | 1.4.4.17.4 | Разработка базовой архитектуры GUI на основе GWT-компонентов |  | 3d | 2013-07-22 A | 2013-07-24 A | 77 | 100% |  |  |  |  | Денис Митавский | 24h | 24h |
| 81 | 1.4.4.17.5 | Интеграция с JAAS/Аутентификация |  | 5d | 2013-07-31 A | 2013-08-06 A | 80 | 100% |  |  |  | start no earlier than 2013-07-08 | Денис Митавский | 40h | 40h |
| 82 | 1.4.4.17.6 | Архитектура разметки главного экрана |  | 2d | 2013-08-07 | 2013-08-08 | 81 |  |  | 47d | 0d |  | Денис Митавский [50%] | 8h |  |

Notes:
- 60: Начальная реализация модуля "документооборот" - замена лотуса
- 71: Включая взаимодействие с Solr
- 72: C учетом релевантности и оптимизации по объедененеию поисков аттрибутивного и полнотекстового
- 74: Используя язык запросов коллеций

| ID | WBS | Task | Duration | Start | Finish | Predecessors | Total slack | Free slack | Resources | Work |
| --- | --- | --- | --- | --- | --- | --- | --- | --- | --- | --- |
| 83 | 1.4.4.17.7 | **Панель навигации** | 12d | 2013-08-09 | 2013-08-26 |  | 47d |  |  | 56h |
| 84 | 1.4.4.17.7.1 | Проектирование - панель навигации | 2d | 2013-08-09 | 2013-08-12 | 82 | 47d | 0d | Денис Митавский [50%] | 8h |
| 85 | 1.4.4.17.7.2 | Разработка - панель навигации | 6d | 2013-08-19 | 2013-08-26 | 84, 78 | 99d | 0d | Алексей Львов | 48h |
| 86 | 1.4.4.17.8 | GUI - архитектура плагинов/дочерних плагинов | 6d | 2013-08-13 | 2013-08-20 | 84 | 47d | 0d | Денис Митавский | 48h |
| 87 | 1.4.4.17.9 | GUI - отображение отчётов | 8d | 2013-08-19 | 2013-08-28 | 86FS-2d, 81 | 107d | 1d | Андрей Карандей | 64h |
| 88 | 1.4.4.17.10 | **GUI - плагин отображения коллекций** | 10d | 2013-08-21 | 2013-09-03 | 86 | 47d |  |  | 64h |
| 89 | 1.4.4.17.10.1 | Проектирование | 2d | 2013-08-21 | 2013-08-22 | 86 | 47d | 0d | Денис Митавский | 16h |
| 90 | 1.4.4.17.10.2 | Разработка | 6d | 2013-08-27 | 2013-09-03 | 85 | 99d | 0d | Алексей Львов | 48h |
| 91 | 1.4.4.17.11 | **GUI - действия** | 14d | 2013-08-23 | 2013-09-11 |  | 47d |  |  | 56h |
| 92 | 1.4.4.17.11.1 | Проектирование | 2d | 2013-08-23 | 2013-08-26 | 89 | 47d | 0d | Денис Митавский [50%] | 8h |
| 93 | 1.4.4.17.11.2 | Разработка | 6d | 2013-09-04 | 2013-09-11 | 90 | 99d |  | Алексей Львов | 48h |
| 94 | 1.4.4.17.12 | **Формы встроенного GUI** | 23d | 2013-08-27 | 2013-09-26 |  | 47d |  |  | 188h |
| 95 | 1.4.4.17.12.1 | Конфигурация-архитектура | 3d | 2013-08-27 | 2013-08-29 | 92 | 47d | 0d | Денис Митавский [50%] | 12h |
| 96 | 1.4.4.17.12.2 | Маппинг на объекты | 2d | 2013-08-30 | 2013-09-02 | 95, 87 | 106d |  | Андрей Карандей | 16h |
| 97 | 1.4.4.17.12.3 | API GWT client-server | 8d | 2013-08-30 | 2013-09-10 | 95 | 47d | 0d | Денис Митавский | 64h |
| 98 | 1.4.4.17.12.4 | Реализация | 12d | 2013-09-11 | 2013-09-26 | 97 | 83d | 0d | Андрей Карандей | 96h |
| 99 | 1.4.4.17.13 | **GUI - поиск** | 17d | 2013-09-11 | 2013-10-03 |  | 69d |  |  | 52h |
| 100 | 1.4.4.17.13.1 | GUI - поиск. Проектирование | 3d | 2013-09-11 | 2013-09-13 | 97 | 69d | 22d | Денис Митавский [50%] | 12h |
| 101 | 1.4.4.17.13.2 | GUI - поиск. Реализация | 5d | 2013-09-27 | 2013-10-03 | 98 | 83d |  | Андрей Карандей | 40h |
| 102 | 1.4.4.17.14 | **GUI - виджеты разработка** | 50d? | 2013-09-11 | 2013-11-19 |  | 47d |  |  | 808h |
| 103 | 1.4.4.17.14.1 | Дата/время | 1d? | 2013-09-11 | 2013-09-11 | 97 | 99d |  | Тимофей Билый | 8h |
| 104 | 1.4.4.17.14.2 | Остальные без особенностей стиля ст.лебедева (базовый набор) | 25d? | 2013-09-11 | 2013-10-15 | 97 | 47d | 0d | Тимофей Билый; Алексей Львов | 400h |
| 105 | 1.4.4.17.14.3 | Остальные для стиля ст.лебедева | 25d? | 2013-10-16 | 2013-11-19 | 104 | 50d |  | Андрей Карандей; Алексей Львов | 400h |
| 106 | 1.4.4.17.15 | **GUI - брендинг, стилизация, темы** | 5d | 2013-10-16 | 2013-10-22 |  | 47d |  |  | 20h |
| 107 | 1.4.4.17.15.1 | Концепция | 5d | 2013-10-16 | 2013-10-22 | 100, 104 | 47d | 0d | Денис Митавский [50%] | 20h |
| 108 | 1.4.4.18 | Тестирование производительности | 25d | 2013-10-23 | 2013-11-26 | 107 | 47d |  | Денис Митавский; Валерий Мацукевич | 400h |
| 109 | 1.4.4.19 | Версионность/аудит | 8d | 2013-08-08 | 2013-08-19 | 35 | 77d | 0d | Валерий Мацукевич | 64h |
| 110 | 1.4.4.20 | Блокировки бизнес-объектов | 6d | 2013-08-20 | 2013-08-27 | 109 | 77d | 0d | Валерий Мацукевич | 48h |
| 111 | 1.4.4.21 | Описание структуры модуля Делопроизводство | 20d | 2013-07-30 | 2013-08-26 | 21, 15, 14, 69 | 33d | 2d | Владимир Панов | 160h |
| 112 | 1.4.4.22 | Уточнение состава и сроков работ | 2d | 2013-11-20 | 2013-11-21 | 76 | 50d |  | Андрей Пирожков; Денис Митавский; Тугушев Илья | 48h |
| 113 | 1.4.4.23 | Кросс-СУБД, поддержка Oracle | 15d | 2013-08-28 | 2013-09-17 | 110 | 77d | 0d | Валерий Мацукевич | 120h |
| 114 | 1.4.4.24 | SQL-trace | 5d | 2013-09-18 | 2013-09-24 | 113 | 77d | 0d | Влад Симоненко | 40h |
| 115 | 1.4.4.25 | Локализация (на уровне конфигурации) | 15d | 2013-09-25 | 2013-10-15 | 114 | 77d |  | Влад Симоненко | 120h |

Notes:
- 108: - полноценное, продуманное, конфигурируемое, полностью автоматизированное (вплоть до промежуточного сбора статистики в СУБД перед запуском тестов производительности) с автоматической генерацией таблиц и графиков, с поддержкой нагружающих потоков и т.п.
- 109: История модификации объекта / Версионность - на бизнес слой
- 113: Кросс-СУБД, поддержка Oracle
- 115: Поддержка ресурсных файлов - в расках конфигурирования ресурсных файлов / Подмена языка в интерфейсе (передача локали пользоввателю) -

| ID | WBS | Task | Duration | Start | Finish | Predecessors | Complete | Remaining | Total slack | Free slack | Resources | Work | Actual work |
| --- | --- | --- | --- | --- | --- | --- | --- | --- | --- | --- | --- | --- | --- |
| 116 | 1.4.4.26 | **Интеграция с системой управления учетными записями** | 14d | 2013-08-28 | 2013-09-16 | 110 |  |  | 98d |  |  | 56h |  |
| 117 | 1.4.4.26.1 | Интеграция с ActiveDirectory | 14d | 2013-08-28 | 2013-09-16 |  |  |  | 98d |  | Андрей Пирожков [50%] | 56h |  |
| 118 | 1.4.4.27 | **Расширение функций сервиса конфигурации** | 28d | 2013-07-09 A | 2013-08-15 |  | 32% | 19d | 105d |  |  | 352h | 72h |
| 119 | 1.4.4.27.1 | Расширяемость конфигурации | 12d | 2013-07-09 A | 2013-07-24 | 37 | 75% | 3d | 77d | 0d | Валерий Мацукевич | 96h | 72h |
| 120 | 1.4.4.27.2 | Изменение и дополнение конфигурации системы | 16d | 2013-07-25 | 2013-08-15 | 119 |  |  | 105d | 0d | Андрей Пирожков; Роман Митинков | 256h |  |
| 121 | 1.4.4.28 | **Сервис для работы с системным журналом** | 15d | 2013-08-16 | 2013-09-05 | 120 |  |  | 105d |  |  | 120h |  |
| 122 | 1.4.4.28.1 | Ведение журнала действий пользователей и действий с объектами системы | 10d | 2013-08-16 | 2013-08-29 |  |  |  | 105d | 0d | Андрей Карандей | 80h |  |
| 123 | 1.4.4.28.2 | Настройка уровня логирования | 5d | 2013-08-30 | 2013-09-05 | 122 |  |  | 105d |  | Андрей Карандей | 40h |  |
| 124 | 1.4.5 | **Разработка** | 209d | 2013-06-11 A | 2014-03-28 | 15 | 7% | 194.46d | 27d |  |  | 6676h | 499.2h |
| 125 | 1.4.5.1 | Контроль и корректировка технических решений "Архитектурный комитет" | 208d | 2013-06-11 A | 2014-03-28 |  | 20% | 166.4d | 27d |  | Тугушев Илья [20%]; Андрей Пирожков [20%]; Денис Митавский [20%]; WEB-дизайнер [20%]; Аналитик [20%]; Владимир Панов [50%] | 2436h | 499.2h |
| 126 | 1.4.5.2 | **Разработка серверной логики модуля CMJ** | 60d | 2013-08-29 | 2013-11-20 | 15, 42, 111 |  |  | 31d | 0d |  | 1920h |  |
| 127 | 1.4.5.2.1 | Разработка схем документов модуля CMJ | 40d | 2013-08-29 | 2013-10-23 |  |  |  | 31d | 0d | Андрей Пирожков [50%]; Влад Симоненко | 480h |  |
| 128 | 1.4.5.2.2 | Разработка ЖЦ процессов модуля (WF) | 20d | 2013-10-24 | 2013-11-20 | 127 |  |  | 31d | 0d | Влад Симоненко; Андрей Пирожков [50%] | 240h |  |
| 129 | 1.4.5.2.3 | Разработка логики бизнес- действий модуля CMJ | 60d | 2013-08-29 | 2013-11-20 |  |  |  | 31d | 0d | Алексей Львов; Андрей Пирожков [50%] | 720h |  |
| 130 | 1.4.5.2.4 | Разработка процессов автоматизации для модуля CMJ | 40d | 2013-08-29 | 2013-10-23 |  |  |  | 89d |  | Андрей Карандей | 320h |  |
| 131 | 1.4.5.2.5 | Разработка модели прав доступа (контекстные роли) | 20d | 2013-10-24 | 2013-11-20 | 127 |  |  | 69d |  | Андрей Карандей | 160h |  |
| 132 | 1.4.5.3 | **Разработка Форм для АРМ тематических администраторов** | 40d | 2013-11-11 | 2014-01-03 | 60 |  |  | 87d |  |  | 960h |  |
| 133 | 1.4.5.3.1 | **Подготовка работы со списками значений** | 40d | 2013-11-11 | 2014-01-03 |  |  |  | 87d |  |  | 640h |  |
| 134 | 1.4.5.3.1.1 | Разработка функционала учета организационно штатной структуры | 40d | 2013-11-11 | 2014-01-03 |  |  |  | 87d |  | Андрей Цветков | 320h |  |
| 135 | 1.4.5.3.1.2 | Разработка функционала с рубрикаторами (сложные справочники) | 20d | 2013-11-11 | 2013-12-06 |  |  |  | 87d | 0d | Валерий Мацукевич | 160h |  |
| 136 | 1.4.5.3.1.3 | Разработка функционала для работы с словарями данных (простые, линейные справочники) | 20d | 2013-12-09 | 2014-01-03 | 135 |  |  | 87d |  | Валерий Мацукевич | 160h |  |
| 137 | 1.4.5.3.2 | Разработка форм для работы в GUI (настройки форм) | 15d | 2013-11-11 | 2013-11-29 |  |  |  | 107d | 0d | Java разработчик3 | 120h |  |
| 138 | 1.4.5.3.3 | Разработка структуры рабочего места АРМ | 5d | 2013-12-02 | 2013-12-06 | 127, 137 |  |  | 107d |  | Java разработчик3 | 40h |  |
| 139 | 1.4.5.3.4 | Разработка специфичных для форм АРМ элементов GUI | 20d | 2013-11-11 | 2013-12-06 |  |  |  | 107d |  | Java разработчик4 | 160h |  |
| 140 | 1.4.5.4 | Подготовка отчетов | 40d | 2013-11-21 | 2014-01-15 | 127, 129, 128 |  |  | 31d | 0d | Влад Симоненко; Алексей Львов; Андрей Карандей | 960h |  |
| 141 | 1.4.5.5 | Сопряжение с мобильным клиентом СМ4 | 50d | 2013-11-21 | 2014-01-29 | 126 |  |  | 69d |  | Java разработчик3 | 400h |  |

Notes:
- 121: Сервис для работы с системным журналомВедение журнала действий пользователей и действий с объектами системы
- 122: Ведение журнала действий пользователей и действий с объектами системы

| ID | WBS | Task | Type | Duration | Start | Finish | Predecessors | Total slack | Free slack | Constraint | Resources | Work |
| --- | --- | --- | --- | --- | --- | --- | --- | --- | --- | --- | --- | --- |
| 142 | 1.4.6 | **Тестирование** |  | 84d? | 2013-11-27 | 2014-03-24 | 20 | 31d | 0d |  |  | 2544h |
| 143 | 1.4.6.1 | **Функциональное тестирование** |  | 69d? | 2013-11-27 | 2014-03-03 |  | 46d |  |  |  | 2224h |
| 144 | 1.4.6.1.1 | Подготовка ПМИ |  | 5d | 2013-11-27 | 2013-12-03 |  | 47d | 0d |  | Тест Аналитик | 40h |
| 145 | 1.4.6.1.2 | Разработка "сценариев тестирования" |  | 15d | 2013-11-27 | 2013-12-17 |  | 52d | 16d |  | Тест Аналитик | 120h |
| 146 | 1.4.6.1.3 | Разработка модели нагрузки для тестирования |  | 10d | 2013-12-04 | 2013-12-17 | 144 | 52d | 16d |  | Тест Аналитик | 80h |
| 147 | 1.4.6.1.4 | Адаптация автоматизированных сценариев от СМ4 для создания нагрузки |  | 25d | 2013-12-04 | 2014-01-07 | 144 | 47d | 16d |  | Влад Симоненко | 200h |
| 148 | 1.4.6.1.5 | **Проведение тестирования** |  | 38d? | 2014-01-09 | 2014-03-03 | 145, 146 | 36d | 0d |  |  | 1784h |
| 149 | 1.4.6.1.5.1 | **Подготовка среды тестирования** |  | 15d? | 2014-01-09 | 2014-01-29 |  | 36d |  |  |  | 200h |
| 150 | 1.4.6.1.5.1.1 | Разворачивание системы |  | 5d? | 2014-01-09 | 2014-01-16 | 152SF | 79d | 0d |  | Влад Симоненко | 40h |
| 151 | 1.4.6.1.5.1.2 | Система готова для подключения инструментов мониторинга | milestone | 0d | 2014-01-16 | 2014-01-16 | 150 | 79d |  |  |  |  |
| 152 | 1.4.6.1.5.1.3 | Наполнение данными |  | 10d? | 2014-01-16 | 2014-01-29 | 140 | 31d | 0d |  | Влад Симоненко; Java разработчик6 | 160h |
| 153 | 1.4.6.1.5.2 | Среда тестирования готова | milestone | 0d | 2014-01-29 | 2014-01-29 | 152, 147 | 31d | 0d | start no earlier than 2012-05-24 |  |  |
| 154 | 1.4.6.1.5.3 | Проведение тестирования |  | 10d | 2014-01-30 | 2014-02-12 | 153 | 31d | 0d |  | Тест Аналитик; Тестировщик [200%] | 240h |
| 155 | 1.4.6.1.5.4 | **Обработка результатов тестирования и внесение изменений в модуль** |  | 15d | 2014-02-11 | 2014-03-03 | 154FS-2d | 31d |  |  |  | 1344h |
| 156 | 1.4.6.1.5.4.1 | Устранение замечаний по результатам функционального тестирования |  | 15d | 2014-02-11 | 2014-03-03 |  | 31d | 0d |  | Java разработчик5; Влад Симоненко [300%]; Валерий Мацукевич; Java разработчик3; Java разработчик4; Андрей Карандей; Алексей Львов; Андрей Цветков | 1200h |
| 157 | 1.4.6.1.5.4.2 | Проверка устранения замечаний |  | 6d | 2014-02-24 | 2014-03-03 | 156FS-6d | 31d | 0d |  | Тест Аналитик; Тестировщик [200%] | 144h |
| 158 | 1.4.6.2 | **Нагрузочное тестирование** |  | 28d | 2014-02-12 | 2014-03-24 | 144 | 31d |  |  |  | 320h |
| 159 | 1.4.6.2.1 | Стенд для нагрузочного тестирования подготовлен | milestone | 0d | 2014-02-12 | 2014-02-12 | 154 | 44d | 13d | finish no earlier than 2012-06-09 |  |  |
| 160 | 1.4.6.2.2 | Проведения нагрузочного тестирования |  | 10d | 2014-03-04 | 2014-03-17 | 157, 147, 159 | 31d | 0d |  | Влад Симоненко; Тест Аналитик; Тестировщик | 240h |
| 161 | 1.4.6.2.3 | Обработка результатов нагрузочного тестирования |  | 5d | 2014-03-18 | 2014-03-24 | 160 | 31d |  |  | Тест Аналитик; Тестировщик | 80h |
| 162 | 1.4.7 | Разработка модуля "Делопроизводство" завершена | milestone | 0d | 2014-03-24 | 2014-03-24 | 142 | 31d |  |  |  |  |
| 163 | 1.4.8 | **Подготовка документации** |  | 80d | 2013-11-27 | 2014-03-18 | 142SS | 35d |  |  |  | 800h |
| 164 | 1.4.8.1 | Разработка документа "Концепция системы " |  | 40d | 2013-11-27 | 2014-01-21 |  | 35d | 0d |  | Владимир Панов | 320h |
| 165 | 1.4.8.2 | Разработка "Software Architecture Document" |  | 40d | 2014-01-22 | 2014-03-18 | 164 | 35d | 0d |  | Владимир Панов | 320h |
| 166 | 1.4.8.3 | Документы подготовлены | milestone | 0d | 2014-03-18 | 2014-03-18 | 165 | 35d |  |  |  |  |
| 167 | 1.4.8.4 | Разработка "Software Architecture Document" для модулей первой очереди |  | 20d | 2013-11-27 | 2013-12-24 |  | 95d | 0d |  | Технический писатель | 160h |
| 168 | 1.4.8.5 | Документы подготовлены | milestone | 0d | 2013-12-24 | 2013-12-24 | 167 | 95d |  |  |  |  |

| ID | WBS | Task | Duration | Start | Finish | Predecessors | Total slack | Free slack | Resources | Work |
| --- | --- | --- | --- | --- | --- | --- | --- | --- | --- | --- |
| 169 | 1.5 | **Проверка работоспособности решения - Организация демонстрации** | 25d? | 2014-01-09 | 2014-02-12 | 148SS | 59d |  |  | 448h |
| 170 | 1.5.1 | Подготовка стенда | 3d | 2014-01-09 | 2014-01-13 | 171SF | 81d |  | Влад Симоненко; Аналитик | 48h |
| 171 | 1.5.2 | Подготовка прототипа | 20d? | 2014-01-09 | 2014-02-05 |  | 59d | 0d | Влад Симоненко; Аналитик | 320h |
| 172 | 1.5.3 | Проведение демонстраций | 3d | 2014-02-06 | 2014-02-10 | 171 | 59d | 0d | Влад Симоненко; Аналитик | 48h |
| 173 | 1.5.4 | Анализ результатов - выводы | 2d | 2014-02-11 | 2014-02-12 | 172 | 59d |  | Влад Симоненко; Аналитик | 32h |
